# Iteration 8

Schedule from MS Project, 2019-09-24 to 2019-10-08.
Ford Motor Company

## Calendars

- Standard: Mon-Fri 08:00-12:00, 13:00-17:00; Sat-Sun off.

## Resources

| Resource |
| --- |
| Bob |

## Schedule

| ID | WBS | Task | Duration | Start | Finish | Predecessors | Total slack | Resources | Work |
| --- | --- | --- | --- | --- | --- | --- | --- | --- | --- |
| 1 | 1 | **Iteration 8 9/25 to 10/8** | 10.75d? | 2019-09-24 08:00 | 2019-10-08 15:00 |  | 0d |  | 182h |
| 2 | 1.1 | **Plan** | 1.12d? | 2019-09-24 08:00 | 2019-09-25 09:00 |  | 0d |  | 9h |
| 3 | 1.1.1 | **update plans** | 0.25d? | 2019-09-24 08:00 | 2019-09-24 10:00 |  | 0d |  | 2h |
| 4 | 1.1.1.1 | update SOD plan to show scope for each tab | 0.12d? | 2019-09-24 08:00 | 2019-09-24 09:00 |  | 0d | Bob | 1h |
| 5 | 1.1.1.2 | Update SOD plan to show education goal and approach | 0.12d? | 2019-09-24 09:00 | 2019-09-24 10:00 | 4 | 0d | Bob | 1h |
| 6 | 1.1.2 | update this schedule | 0.12d? | 2019-09-24 10:00 | 2019-09-24 11:00 | 5 | 0d | Bob | 1h |
| 7 | 1.1.3 | update resource availability calendars | 0.12d? | 2019-09-24 11:00 | 2019-09-24 12:00 | 6 | 0d | Bob | 1h |
| 8 | 1.1.4 | update dependencies | 0.12d? | 2019-09-24 13:00 | 2019-09-24 14:00 | 7 | 0d | Bob | 1h |
| 9 | 1.1.5 | update stories | 0.12d? | 2019-09-24 14:00 | 2019-09-24 15:00 | 8 | 0d | Bob | 1h |
| 10 | 1.1.6 | update tasks | 0.12d? | 2019-09-24 15:00 | 2019-09-24 16:00 | 9 | 0d | Bob | 1h |
| 11 | 1.1.7 | update risks | 0.12d? | 2019-09-24 16:00 | 2019-09-24 17:00 | 10 | 0d | Bob | 1h |
| 12 | 1.1.8 | Review the plan | 0.12d | 2019-09-25 08:00 | 2019-09-25 09:00 | 11 | 0d | Bob | 1h |
| 13 | 1.2 | **SPLUNK Research** | 9.38d? | 2019-09-25 09:00 | 2019-10-08 12:00 |  | 0d |  | 10h |
| 14 | 1.2.1 | Pull Usage data per Swamy and work with SPLUNK team to fix data | 0.12d | 2019-09-25 09:00 | 2019-09-25 10:00 | 12 | 0d | Bob | 1h |
| 15 | 1.2.2 | Pull Usage data per Swamy and work with SPLUNK team to fix data | 0.12d? | 2019-09-26 08:00 | 2019-09-26 09:00 | 55 | 0d | Bob | 1h |
| 16 | 1.2.3 | Pull Usage data per Swamy and work with SPLUNK team to fix data | 0.12d? | 2019-09-27 08:00 | 2019-09-27 09:00 | 63 | 0d | Bob | 1h |
| 17 | 1.2.4 | Pull Usage data per Swamy and work with SPLUNK team to fix data | 0.12d? | 2019-09-30 08:00 | 2019-09-30 09:00 | 67 | 0d | Bob | 1h |
| 18 | 1.2.5 | Pull Usage data per Swamy and work with SPLUNK team to fix data | 0.12d? | 2019-10-01 08:00 | 2019-10-01 09:00 | 74 | 0d | Bob | 1h |
| 19 | 1.2.6 | Pull Usage data per Swamy and work with SPLUNK team to fix data | 0.12d? | 2019-10-02 11:00 | 2019-10-02 12:00 | 79 | 0d | Bob | 1h |
| 20 | 1.2.7 | Pull Usage data per Swamy and work with SPLUNK team to fix data | 0.12d? | 2019-10-03 11:00 | 2019-10-03 12:00 | 80 | 0d | Bob | 1h |
| 21 | 1.2.8 | Pull Usage data per Swamy and work with SPLUNK team to fix data | 0.12d? | 2019-10-04 11:00 | 2019-10-04 12:00 | 81 | 0d | Bob | 1h |
| 22 | 1.2.9 | Pull Usage data per Swamy and work with SPLUNK team to fix data | 0.12d? | 2019-10-07 11:00 | 2019-10-07 12:00 | 83 | 0d | Bob | 1h |
| 23 | 1.2.10 | Pull Usage data per Swamy and work with SPLUNK team to fix data | 0.12d? | 2019-10-08 11:00 | 2019-10-08 12:00 | 84 | 0d | Bob | 1h |
| 24 | 1.3 | **CMT** | 10.62d? | 2019-09-24 08:00 | 2019-10-08 14:00 |  | 0d |  | 26h |
| 25 | 1.3.1 | Follow up with Kuldeep and Rao to get contacts for cdsid procedures | 0.12d? | 2019-09-25 10:00 | 2019-09-25 11:00 | 14 | 0d | Bob | 1h |
| 26 | 1.3.2 | Contact credential owners and ask for procedures via email | 0.12d? | 2019-09-26 09:00 | 2019-09-26 10:00 | 15 | 0d | Bob | 1h |
| 27 | 1.3.3 | follow up with credential owners via email | 0.12d? | 2019-09-27 09:00 | 2019-09-27 10:00 | 16 | 0d | Bob | 1h |
| 28 | 1.3.4 | follow up with credential owners via call | 0.12d? | 2019-09-30 09:00 | 2019-09-30 10:00 | 17 | 0d | Bob | 1h |
| 29 | 1.3.5 | follow up with credential owners via visit | 0.12d? | 2019-10-01 09:00 | 2019-10-01 10:00 | 18 | 0d | Bob | 1h |
| 30 | 1.3.6 | validate procedures | 0.12d? | 2019-10-02 13:00 | 2019-10-02 14:00 | 19 | 0d | Bob | 1h |
| 31 | 1.3.7 | request procedure fixes | 0.12d? | 2019-10-03 13:00 | 2019-10-03 14:00 | 20 | 0d | Bob | 1h |
| 32 | 1.3.8 | followup on procedure updates via email | 0.12d? | 2019-10-04 13:00 | 2019-10-04 14:00 | 21 | 0d | Bob | 1h |
| 33 | 1.3.9 | followup on procedure updates via call | 0.12d? | 2019-10-07 13:00 | 2019-10-07 14:00 | 22 | 0d | Bob | 1h |
| 34 | 1.3.10 | followup on procedure updates via visit | 0.12d? | 2019-10-08 13:00 | 2019-10-08 14:00 | 23 | 0d | Bob | 1h |
| 35 | 1.3.11 | setup kt sessions with Ops Control 30 minutes per procedure | 0.12d? | 2019-09-24 08:00 | 2019-09-24 09:00 |  | 0d | Bob | 1h |
| 36 | 1.3.12 | facilitate weekly kt session | 0.12d | 2019-09-24 08:00 | 2019-09-24 09:00 |  | 0d | Bob | 1h |
| 37 | 1.3.13 | facilitate weekly kt session | 0.12d | 2019-09-24 08:00 | 2019-09-24 09:00 |  | 0d | Bob | 1h |
| 38 | 1.3.14 | facilitate weekly kt session | 0.12d? | 2019-09-24 08:00 | 2019-09-24 09:00 |  | 0d | Bob | 1h |
| 39 | 1.3.15 | facilitate weekly kt session | 0.12d? | 2019-09-24 08:00 | 2019-09-24 09:00 |  | 0d | Bob | 1h |
| 40 | 1.3.16 | facilitate weekly kt session | 0.12d? | 2019-09-24 08:00 | 2019-09-24 09:00 |  | 0d | Bob | 1h |
| 41 | 1.3.17 | facilitate weekly kt session | 0.12d? | 2019-09-24 08:00 | 2019-09-24 09:00 |  | 0d | Bob | 1h |
| 42 | 1.3.18 | facilitate weekly kt session | 0.12d? | 2019-09-24 08:00 | 2019-09-24 09:00 |  | 0d | Bob | 1h |
| 43 | 1.3.19 | facilitate weekly kt session | 0.12d? | 2019-09-24 08:00 | 2019-09-24 09:00 |  | 0d | Bob | 1h |
| 44 | 1.3.20 | facilitate weekly kt session | 0.12d? | 2019-09-24 08:00 | 2019-09-24 09:00 |  | 0d | Bob | 1h |
| 45 | 1.3.21 | facilitate weekly kt session | 0.12d? | 2019-09-24 08:00 | 2019-09-24 09:00 |  | 0d | Bob | 1h |
| 46 | 1.3.22 | assist with the mapping of data from SharePoint to the TOPUS data model | 0.25d | 2019-09-24 08:00 | 2019-09-24 10:00 |  | 0d | Bob | 2h |
| 47 | 1.3.23 | assist with the mapping of data from SharePoint to the TOPUS data model | 0.25d | 2019-09-24 08:00 | 2019-09-24 10:00 |  | 0d | Bob | 2h |
| 48 | 1.3.24 | obtain sign off from ops control team | 1d | 2019-09-24 08:00 | 2019-09-24 17:00 |  | 0d | Bob | 1h |

| ID | WBS | Task | Duration | Start | Finish | Predecessors | Total slack | Resources | Work |
| --- | --- | --- | --- | --- | --- | --- | --- | --- | --- |
| 49 | 1.4 | **SOD** | 10.75d? | 2019-09-24 08:00 | 2019-10-08 15:00 |  | 0d |  | 137h |
| 50 | 1.4.1 | **# IT - Map SOD Roles to IT Team Roles** | 0.62d? | 2019-09-25 11:00 | 2019-09-25 17:00 |  | 0d |  | 5h |
| 51 | 1.4.1.1 | Add SOD Role to the detailed grid | 60min | 2019-09-25 11:00 | 2019-09-25 12:00 | 25 | 0d | Bob | 1h |
| 52 | 1.4.1.2 | Ensure each IT Team CDSID is valid | 60min | 2019-09-25 13:00 | 2019-09-25 14:00 | 51 | 0d | Bob | 1h |
| 53 | 1.4.1.3 | Add SOD Role to IT Team List from Jonah | 0.12d? | 2019-09-25 14:00 | 2019-09-25 15:00 | 52 | 0d | Bob | 1h |
| 54 | 1.4.1.4 | Review the list and correct as needed | 0.12d? | 2019-09-25 15:00 | 2019-09-25 16:00 | 53 | 0d | Bob | 1h |
| 55 | 1.4.1.5 | Identify risk in role gaps | 60min | 2019-09-25 16:00 | 2019-09-25 17:00 | 54 | 0d | Bob | 1h |
| 56 | 1.4.2 | **# IT - Map Access Levels in SOD to external sources** | 0.5d? | 2019-09-26 10:00 | 2019-09-26 15:00 |  | 0d |  | 4h |
| 57 | 1.4.2.1 | Create a list of access levels for each component in the SOD | 60min | 2019-09-26 10:00 | 2019-09-26 11:00 | 26 | 0d | Bob | 1h |
| 58 | 1.4.2.2 | Map each list to external system access level | 0.12d? | 2019-09-26 11:00 | 2019-09-26 12:00 | 57 | 0d | Bob | 1h |
| 59 | 1.4.2.3 | identify gaps | 0.12d? | 2019-09-26 13:00 | 2019-09-26 14:00 | 58 | 0d | Bob | 1h |
| 60 | 1.4.2.4 | review and correct as needed | 0.12d? | 2019-09-26 14:00 | 2019-09-26 15:00 | 59 | 0d | Bob | 1h |
| 61 | 1.4.3 | **# IT - Build utility to determine if conflict exists** | 4.75d? | 2019-09-24 08:00 | 2019-09-30 15:00 |  | 0d |  | 18h |
| 62 | 1.4.3.1 | build list of conflict conditions for each role | 0.12d? | 2019-09-26 15:00 | 2019-09-26 16:00 | 60 | 0d | Bob | 1h |
| 63 | 1.4.3.2 | build cross join of all tables of conflict conditions | 0.12d? | 2019-09-26 16:00 | 2019-09-26 17:00 | 62 | 0d | Bob | 1h |
| 64 | 1.4.3.3 | **build search utility** | 1.5d? | 2019-09-27 10:00 | 2019-09-30 15:00 |  | 0d |  | 10h |
| 65 | 1.4.3.3.1 | search for role using cdsid | 0.25d? | 2019-09-27 10:00 | 2019-09-27 12:00 | 27 | 0d | Bob | 2h |
| 66 | 1.4.3.3.2 | search for external access levels for cdsid | 0.25d? | 2019-09-27 13:00 | 2019-09-27 15:00 | 65 | 0d | Bob | 2h |
| 67 | 1.4.3.3.3 | search for access level mapping | 0.25d? | 2019-09-27 15:00 | 2019-09-27 17:00 | 66 | 0d | Bob | 2h |
| 68 | 1.4.3.3.4 | search for components impacted | 0.25d? | 2019-09-30 10:00 | 2019-09-30 12:00 | 28 | 0d | Bob | 2h |
| 69 | 1.4.3.3.5 | determine if conflict exists | 0.25d? | 2019-09-30 13:00 | 2019-09-30 15:00 | 68 | 0d | Bob | 2h |
| 70 | 1.4.3.4 | High level Test Plan | 0.75d? | 2019-09-24 08:00 | 2019-09-24 15:00 |  | 0d | Bob | 6h |
| 71 | 1.4.4 | **# IT - Validate roles in conflict and educate** | 5.62d? | 2019-09-24 08:00 | 2019-10-01 14:00 |  | 0d |  | 6h |
| 72 | 1.4.4.1 | Develop list of questions to help educate QA with conflicts | 0.12d? | 2019-09-30 15:00 | 2019-09-30 16:00 | 69 | 0d | Bob | 1h |
| 73 | 1.4.4.2 | Develop presentation to help remind everyone | 0.12d? | 2019-09-24 08:00 | 2019-09-24 09:00 |  | 0d | Bob | 1h |
| 74 | 1.4.4.3 | Validate and educate Kuldeep and Abeshake Roles | 60min | 2019-09-30 16:00 | 2019-09-30 17:00 | 72 | 0d | Bob | 1h |
| 75 | 1.4.4.4 | Validate and educate people and their managers in the QA role | 0.12d? | 2019-10-01 10:00 | 2019-10-01 11:00 | 29 | 0d | Bob | 1h |
| 76 | 1.4.4.5 | Validate and educate people and their managers in the Scheduler role | 0.12d | 2019-10-01 11:00 | 2019-10-01 12:00 | 75 | 0d | Bob | 1h |
| 77 | 1.4.4.6 | If conflict exists, add a detailed record to the SOD | 60min | 2019-10-01 13:00 | 2019-10-01 14:00 | 76 | 0d | Bob | 1h |

| ID | WBS | Task | Duration | Start | Finish | Predecessors | Total slack | Resources | Work |
| --- | --- | --- | --- | --- | --- | --- | --- | --- | --- |
| 78 | 1.4.5 | **# IT - Determine Compensating Controls for FEDEBOM PROD Access** | 2.75d | 2019-10-01 14:00 | 2019-10-04 11:00 |  | 0d |  | 18h |
| 79 | 1.4.5.1 | Identify how the sources of truth are updated | 360min | 2019-10-01 14:00 | 2019-10-02 11:00 | 77 | 0d | Bob | 6h |
| 80 | 1.4.5.2 | Create monitor for changes | 360min | 2019-10-02 14:00 | 2019-10-03 11:00 | 30 | 0d | Bob | 6h |
| 81 | 1.4.5.3 | Create models for each Compensating Control | 360min | 2019-10-03 14:00 | 2019-10-04 11:00 | 31 | 0d | Bob | 6h |
| 82 | 1.4.6 | **# IT - Gather FBR Qlikview Access** | 1.75d | 2019-10-04 14:00 | 2019-10-08 11:00 |  | 0d |  | 12h |
| 83 | 1.4.6.1 | Identify the contact who can provide the information | 360min | 2019-10-04 14:00 | 2019-10-07 11:00 | 32 | 0d | Bob | 6h |
| 84 | 1.4.6.2 | Acclimate the contact to the SOD and request the data | 360min | 2019-10-07 14:00 | 2019-10-08 11:00 | 33 | 0d | Bob | 6h |
| 85 | 1.4.7 | **# IT - Gather Hadoop Access** | 10.75d | 2019-09-24 08:00 | 2019-10-08 15:00 |  | 0d |  | 13h |
| 86 | 1.4.7.1 | Identify the contact who can provide the information | 60min | 2019-10-08 14:00 | 2019-10-08 15:00 | 34 | 0d | Bob | 1h |
| 87 | 1.4.7.2 | Acclimate the contact to the SOD and request the data | 720min | 2019-09-24 08:00 | 2019-09-25 12:00 |  | 0d | Bob | 12h |
| 88 | 1.4.8 | **# IT - Gather FEDEBOM Servers Access** | 0.75d | 2019-09-24 08:00 | 2019-09-24 15:00 |  | 0d |  | 12h |
| 89 | 1.4.8.1 | Identify the contact who can provide the information | 360min | 2019-09-24 08:00 | 2019-09-24 15:00 |  | 0d | Bob | 6h |
| 90 | 1.4.8.2 | Acclimate the contact to the SOD and request the data | 360min | 2019-09-24 08:00 | 2019-09-24 15:00 |  | 0d | Bob | 6h |
| 91 | 1.4.9 | add in the remaining scheduler environments | 5d | 2019-09-24 08:00 | 2019-09-30 17:00 |  | 0d | Bob | 40h |
| 92 | 1.4.10 | **# IT - Prepare the SOD for Business Review and Sign-Off** | 1.12d | 2019-09-24 08:00 | 2019-09-25 09:00 |  | 0d |  | 9h |
| 93 | 1.4.10.1 | Record Issues and Gaps | 60min | 2019-09-24 08:00 | 2019-09-24 09:00 |  | 0d | Bob | 1h |
| 94 | 1.4.10.2 | Build Deck of Problems and Actions | 60min | 2019-09-24 09:00 | 2019-09-24 10:00 | 93 | 0d | Bob | 1h |
| 95 | 1.4.10.3 | Build SOD Workbook with Tabs | 60min | 2019-09-24 10:00 | 2019-09-24 11:00 | 94 | 0d | Bob | 1h |
| 96 | 1.4.10.4 | Identify all Stakeholders | 60min | 2019-09-24 11:00 | 2019-09-24 12:00 | 95 | 0d | Bob | 1h |
| 97 | 1.4.10.5 | Ensure redundant information is up to date | 60min | 2019-09-24 13:00 | 2019-09-24 14:00 | 96 | 0d | Bob | 1h |
| 98 | 1.4.10.6 | Create sample tickets for executing Actions | 60min | 2019-09-24 14:00 | 2019-09-24 15:00 | 97 | 0d | Bob | 1h |
| 99 | 1.4.10.7 | Setup Meeting(s) for Review | 60min | 2019-09-24 15:00 | 2019-09-24 16:00 | 98 | 0d | Bob | 1h |
| 100 | 1.4.10.8 | Gather Email Approvals | 60min | 2019-09-24 16:00 | 2019-09-24 17:00 | 99 | 0d | Bob | 1h |
| 101 | 1.4.10.9 | Setup Monitoring | 60min | 2019-09-25 08:00 | 2019-09-25 09:00 | 100 | 0d | Bob | 1h |
