# Iteration 8

Schedule from MS Project, 2019-09-26 to 2019-11-13, 4 hours a day, A marks actual dates.
Ford Motor Company

## Calendars

- Standard: Mon-Fri 08:00-12:00, 13:00-17:00; Sat-Sun off.

## Resources

| Resource |
| --- |
| Bob |

## Schedule

| ID | WBS | Task | Duration | Start | Finish | Predecessors | Complete | Remaining | Total slack | Resources | Work | Actual work |
| --- | --- | --- | --- | --- | --- | --- | --- | --- | --- | --- | --- | --- |
| 1 | 1 | **Iteration 8 9/25 to 10/8** | 68.25d? | 2019-09-26 08:00 A | 2019-11-13 09:00 |  | 2% | 66.76d? | 0d |  | 137h | 3h |
| 2 | 1.1 | **SOD** | 16.25d? | 2019-09-26 08:00 A | 2019-10-08 09:00 |  | 9% | 14.77d? | 0d |  | 33h | 3h |
| 3 | 1.1.1 | **# IT - Map SOD Roles to IT Team Roles** | 2.25d? | 2019-09-26 08:00 A | 2019-09-27 09:00 |  | 60% | 0.9d? | 0d |  | 5h | 3h |
| 4 | 1.1.1.1 | Add SOD Role to the detailed grid | 60min | 2019-09-26 08:00 A | 2019-09-26 09:00 A |  | 100% |  |  | Bob | 1h | 1h |
| 5 | 1.1.1.2 | Ensure each IT Team CDSID is valid | 60min | 2019-09-26 09:00 A | 2019-09-26 10:00 A | 4 | 100% |  |  | Bob | 1h | 1h |
| 6 | 1.1.1.3 | Add SOD Role to IT Team List from Jonah | 0.25d? | 2019-09-27 06:00 A | 2019-09-27 07:00 A | 5 | 100% |  |  | Bob | 1h | 1h |
| 7 | 1.1.1.4 | Review the list and correct as needed | 0.25d? | 2019-09-27 07:00 | 2019-09-27 08:00 | 6 |  |  | 0d | Bob | 1h |  |
| 8 | 1.1.1.5 | Identify risk in role gaps | 60min | 2019-09-27 08:00 | 2019-09-27 09:00 | 7 |  |  | 0d | Bob | 1h |  |
| 9 | 1.1.2 | **# IT - Map Access Levels in SOD to external sources** | 2d? | 2019-09-27 09:00 | 2019-09-30 09:00 |  |  |  | 0d |  | 4h |  |
| 10 | 1.1.2.1 | Create a list of access levels for each component in the SOD | 60min | 2019-09-27 09:00 | 2019-09-27 10:00 | 8 |  |  | 0d | Bob | 1h |  |
| 11 | 1.1.2.2 | Map each list to external system access level | 0.25d? | 2019-09-30 06:00 | 2019-09-30 07:00 | 10 |  |  | 0d | Bob | 1h |  |
| 12 | 1.1.2.3 | identify gaps | 0.25d? | 2019-09-30 07:00 | 2019-09-30 08:00 | 11 |  |  | 0d | Bob | 1h |  |
| 13 | 1.1.2.4 | review and correct as needed | 0.25d? | 2019-09-30 08:00 | 2019-09-30 09:00 | 12 |  |  | 0d | Bob | 1h |  |
| 14 | 1.1.3 | **# IT - Create Test Plan** | 3.75d? | 2019-09-30 09:00 | 2019-10-02 07:00 |  |  |  | 0d |  | 6h |  |
| 15 | 1.1.3.1 | Create test case for cross join | 0.25d? | 2019-09-30 09:00 | 2019-09-30 10:00 | 13 |  |  | 0d | Bob | 1h |  |
| 16 | 1.1.3.2 | Create test case for production access | 0.25d? | 2019-10-01 06:00 | 2019-10-01 07:00 | 15 |  |  | 0d | Bob | 1h |  |
| 17 | 1.1.3.3 | Create test case for QA access | 0.25d? | 2019-10-01 07:00 | 2019-10-01 08:00 | 16 |  |  | 0d | Bob | 1h |  |
| 18 | 1.1.3.4 | Create test case for Code Promoter access | 0.25d? | 2019-10-01 08:00 | 2019-10-01 09:00 | 17 |  |  | 0d | Bob | 1h |  |
| 19 | 1.1.3.5 | Create test case for Setup access | 0.25d? | 2019-10-01 09:00 | 2019-10-01 10:00 | 18 |  |  | 0d | Bob | 1h |  |
| 20 | 1.1.3.6 | Create test case for conflict matrix | 0.25d? | 2019-10-02 06:00 | 2019-10-02 07:00 | 19 |  |  | 0d | Bob | 1h |  |
| 21 | 1.1.4 | **# IT - Build utility to determine if conflict exists** | 6d? | 2019-10-02 07:00 | 2019-10-07 07:00 |  |  |  | 0d |  | 12h |  |
| 22 | 1.1.4.1 | build list of conflict conditions for each role | 0.25d? | 2019-10-02 07:00 | 2019-10-02 08:00 | 20 |  |  | 0d | Bob | 1h |  |
| 23 | 1.1.4.2 | build cross join of all tables of conflict conditions | 0.25d? | 2019-10-02 08:00 | 2019-10-02 09:00 | 22 |  |  | 0d | Bob | 1h |  |
| 24 | 1.1.4.3 | **build search utility** | 5.75d? | 2019-10-02 09:00 | 2019-10-07 07:00 |  |  |  | 0d |  | 10h |  |
| 25 | 1.1.4.3.1 | search for role using cdsid | 0.5d? | 2019-10-02 09:00 | 2019-10-03 07:00 | 23 |  |  | 0d | Bob | 2h |  |
| 26 | 1.1.4.3.2 | search for external access levels for cdsid | 0.5d? | 2019-10-03 07:00 | 2019-10-03 09:00 | 25 |  |  | 0d | Bob | 2h |  |
| 27 | 1.1.4.3.3 | search for access level mapping | 0.5d? | 2019-10-03 09:00 | 2019-10-04 07:00 | 26 |  |  | 0d | Bob | 2h |  |
| 28 | 1.1.4.3.4 | search for components impacted | 0.5d? | 2019-10-04 07:00 | 2019-10-04 09:00 | 27 |  |  | 0d | Bob | 2h |  |
| 29 | 1.1.4.3.5 | determine if conflict exists | 0.5d? | 2019-10-04 09:00 | 2019-10-07 07:00 | 28 |  |  | 0d | Bob | 2h |  |

| ID | WBS | Task | Duration | Start | Finish | Predecessors | Total slack | Resources | Work |
| --- | --- | --- | --- | --- | --- | --- | --- | --- | --- |
| 30 | 1.1.5 | **# IT - Validate roles in conflict and educate** | 2.25d? | 2019-10-07 07:00 | 2019-10-08 09:00 |  | 0d |  | 6h |
| 31 | 1.1.5.1 | Develop list of questions to help educate QA with conflicts | 0.25d? | 2019-10-07 07:00 | 2019-10-07 08:00 | 29 | 0d | Bob | 1h |
| 32 | 1.1.5.2 | Develop presentation to help remind everyone | 0.25d? | 2019-10-07 08:00 | 2019-10-07 09:00 | 31 | 0d | Bob | 1h |
| 33 | 1.1.5.3 | Validate and educate Kuldeep and Abeshake Roles | 60min | 2019-10-07 09:00 | 2019-10-07 10:00 | 32 | 0d | Bob | 1h |
| 34 | 1.1.5.4 | Validate and educate people and their managers in the QA role | 0.25d? | 2019-10-08 06:00 | 2019-10-08 07:00 | 33 | 0d | Bob | 1h |
| 35 | 1.1.5.5 | Validate and educate people and their managers in the Scheduler role | 0.25d | 2019-10-08 07:00 | 2019-10-08 08:00 | 34 | 0d | Bob | 1h |
| 36 | 1.1.5.6 | If conflict exists, add a detailed record to the SOD | 60min | 2019-10-08 08:00 | 2019-10-08 09:00 | 35 | 0d | Bob | 1h |
| 37 | 1.2 | **Iteration 9 10/8 to** | 52d | 2019-10-08 09:00 | 2019-11-13 09:00 |  | 0d |  | 104h |
| 38 | 1.2.1 | **# IT - Determine Compensating Controls for FEDEBOM PROD Access** | 9.75d | 2019-10-08 09:00 | 2019-10-15 07:00 |  | 0d |  | 18h |
| 39 | 1.2.1.1 | Identify how the sources of truth are updated | 360min | 2019-10-08 09:00 | 2019-10-10 07:00 | 36 | 0d | Bob | 6h |
| 40 | 1.2.1.2 | Create monitor for changes | 360min | 2019-10-10 07:00 | 2019-10-11 09:00 | 39 | 0d | Bob | 6h |
| 41 | 1.2.1.3 | Create models for each Compensating Control | 360min | 2019-10-11 09:00 | 2019-10-15 07:00 | 40 | 0d | Bob | 6h |
| 42 | 1.2.2 | **# IT - Gather FBR Qlikview Access** | 6d | 2019-10-15 07:00 | 2019-10-18 07:00 |  | 0d |  | 12h |
| 43 | 1.2.2.1 | Identify the contact who can provide the information | 360min | 2019-10-15 07:00 | 2019-10-16 09:00 | 41 | 0d | Bob | 6h |
| 44 | 1.2.2.2 | Acclimate the contact to the SOD and request the data | 360min | 2019-10-16 09:00 | 2019-10-18 07:00 | 43 | 0d | Bob | 6h |
| 45 | 1.2.3 | **# IT - Gather Hadoop Access** | 6d | 2019-10-18 07:00 | 2019-10-23 08:00 |  | 0d |  | 13h |
| 46 | 1.2.3.1 | Identify the contact who can provide the information | 60min | 2019-10-18 07:00 | 2019-10-18 08:00 | 44 | 0d | Bob | 1h |
| 47 | 1.2.3.2 | Acclimate the contact to the SOD and request the data | 720min | 2019-10-18 08:00 | 2019-10-23 08:00 | 46 | 0d | Bob | 12h |
| 48 | 1.2.4 | **# IT - Gather FEDEBOM Servers Access** | 6d | 2019-10-23 08:00 | 2019-10-28 08:00 |  | 0d |  | 12h |
| 49 | 1.2.4.1 | Identify the contact who can provide the information | 360min | 2019-10-23 08:00 | 2019-10-24 10:00 | 47 | 0d | Bob | 6h |
| 50 | 1.2.4.2 | Acclimate the contact to the SOD and request the data | 360min | 2019-10-25 06:00 | 2019-10-28 08:00 | 49 | 0d | Bob | 6h |
| 51 | 1.2.5 | add in the remaining scheduler environments | 10d | 2019-10-28 08:00 | 2019-11-11 08:00 | 50 | 0d | Bob | 40h |
| 52 | 1.2.6 | **# IT - Prepare the SOD for Business Review and Sign-Off** | 4.25d | 2019-11-11 08:00 | 2019-11-13 09:00 |  | 0d |  | 9h |
| 53 | 1.2.6.1 | Record Issues and Gaps | 60min | 2019-11-11 08:00 | 2019-11-11 09:00 | 51 | 0d | Bob | 1h |
| 54 | 1.2.6.2 | Build Deck of Problems and Actions | 60min | 2019-11-11 09:00 | 2019-11-11 10:00 | 53 | 0d | Bob | 1h |
| 55 | 1.2.6.3 | Build SOD Workbook with Tabs | 60min | 2019-11-12 06:00 | 2019-11-12 07:00 | 54 | 0d | Bob | 1h |
| 56 | 1.2.6.4 | Identify all Stakeholders | 60min | 2019-11-12 07:00 | 2019-11-12 08:00 | 55 | 0d | Bob | 1h |
| 57 | 1.2.6.5 | Ensure redundant information is up to date | 60min | 2019-11-12 08:00 | 2019-11-12 09:00 | 56 | 0d | Bob | 1h |
| 58 | 1.2.6.6 | Create sample tickets for executing Actions | 60min | 2019-11-12 09:00 | 2019-11-12 10:00 | 57 | 0d | Bob | 1h |
| 59 | 1.2.6.7 | Setup Meeting(s) for Review | 60min | 2019-11-13 06:00 | 2019-11-13 07:00 | 58 | 0d | Bob | 1h |
| 60 | 1.2.6.8 | Gather Email Approvals | 60min | 2019-11-13 07:00 | 2019-11-13 08:00 | 59 | 0d | Bob | 1h |
| 61 | 1.2.6.9 | Setup Monitoring | 60min | 2019-11-13 08:00 | 2019-11-13 09:00 | 60 | 0d | Bob | 1h |

| ID | WBS | Task | Duration | Start | Finish | Total slack |
| --- | --- | --- | --- | --- | --- | --- |
| 62 | 2 | **Changes before review** | 1d? | 2019-09-26 08:00 | 2019-09-26 12:00 | 0d |
| 63 | 2.1 | **ensure only conflict data shows on tabs** | 1d? | 2019-09-26 08:00 | 2019-09-26 12:00 | 0d |
| 64 | 2.1.1 | Production and DEV conflicts | 1d? | 2019-09-26 08:00 | 2019-09-26 12:00 | 0d |
| 65 | 2.1.2 | spin through SOD | 1d? | 2019-09-26 08:00 | 2019-09-26 12:00 | 0d |
| 66 | 2.1.3 | Add prompt to review current IT Team and changes | 1d? | 2019-09-26 08:00 | 2019-09-26 12:00 | 0d |
